# Antibot Ad Arte

Schedule from GanttProject, 2026-04-28 to 2026-05-15.
Prisma
Validazione protezioni antiBot WAF Fortinet su ambiente di collaudo Ad Arte. 5 BOT (DoS, ATO, Registration, Content Scraping, Price Scraping) eseguiti da fleet Linode (5 VM in nl-ams) per dimostrare la corretta detection.

## Calendars

- Project calendar: Mon-Fri working; Sat-Sun off.

## Resources

| Resource |
| --- |
| Dev |
| SOC |
| Cliente Ad Arte |

## Schedule

| ID | WBS | Task | Duration | Start | Finish | Predecessors | Resources |
| --- | --- | --- | --- | --- | --- | --- | --- |
| 1 | 1 | Discovery e design | 2d | 2026-04-28 | 2026-04-29 |  | Dev |
| 2 | 2 | Build core framework | 3d | 2026-04-30 | 2026-05-04 | 1 | Dev |
| 3 | 3 | **Implementazione BOT** | 4d | 2026-05-05 | 2026-05-08 | 2 |  |
| 4 | 3.1 | HTTP (BOT-1 DoS + BOT-2 ATO) | 3d | 2026-05-05 | 2026-05-07 |  | Dev |
| 5 | 3.2 | Browser (BOT-4 Content + BOT-5 Price) | 4d | 2026-05-05 | 2026-05-08 |  | Dev |
| 6 | 3.3 | Admin API (BOT-3 Registration) | 3d | 2026-05-05 | 2026-05-07 |  | Dev |
| 7 | 4 | **Infrastruttura e credenziali** | 2d | 2026-05-05 | 2026-05-06 | 2 |  |
| 8 | 4.1 | Estrazione credenziali collaudo | 1d | 2026-05-05 | 2026-05-05 |  | Dev |
| 9 | 4.2 | Provisioning Linode fleet | 2d | 2026-05-06 | 2026-05-07 |  | Dev |
| 10 | 5 | **SOC + esecuzione test** | 3d | 2026-05-11 | 2026-05-13 | 3, 7 |  |
| 11 | 5.1 | Mail SOC + attesa whitelist | 2d | 2026-05-11 | 2026-05-12 |  | SOC |
| 12 | 5.2 | Run BOT-2/3/4/5 + BOT-1 con pre-mortem | 1d | 2026-05-13 | 2026-05-13 |  | Dev |
| 13 | 6 | Report + delivery | 2d | 2026-05-14 | 2026-05-15 | 10 | Dev |

Notes:
- 1: Lettura specifica, Excel endpoint, swagger collaudo. Decisioni architetturali (Linode fleet vs locale, dry-run safety, branching).
- 2: Repo, scaffolding Python (uv + ruff + mypy), Dockerfile, CI GitHub Actions, runner generico, WAF signals classifier, reporter Markdown.
- 3: 3 stream paralleli sopra il core framework.
- 4: httpx async, dry-run safe, BOT-1 con env safety WAF_BOTS_ALLOW_DOS.
- 5: Playwright Chromium headless, navigator.webdriver=true di default (no stealth).
- 6: Keycloak realm AD-Arte-visitors, password grant + POST /admin/realms/.../users, refresh token su 401.
- 7: Stream parallelo: estrazione cred Keycloak da K8s collaudo + provisioning fleet Linode 5 VM in nl-ams (2x g6-standard-1 + 3x g6-standard-2).
- 9: SSH key + StackScript LF + 5 VM. Build immagine Docker su ciascuna VM tramite git clone (repo pubblico).
- 10: Mail SOC con IP fleet + attesa whitelist + run effettivo dei BOT.
- 13: Consolidamento JSON->Markdown, integrazione log FortiGate forniti dal SOC, delivery cliente, teardown fleet.
